# Cronograma

Schedule from MS Project, 2018-10-29 to 2018-12-03.

## Calendars

- Padrão: Mon-Fri 09:00-12:00, 13:00-18:00; Sat-Sun off. Exceptions (off unless hours are given): 2018-11-03 09:00-12:00, 13:00-18:00, 2018-11-11 09:00-12:00, 13:00-18:00, 2018-11-18 09:00-12:00, 13:00-18:00, 2018-12-01 09:00-12:00, 13:00-18:00.

## Resources

| Resource |
| --- |
| Analista 1 |
| Analista 2 |
| Cliente |
| Aalista 2 |
| Programador 1 |
| Programador 2 |
| Analista 3 |
| Analista 4 |
| José |
| André |
| Felippe |
| Érick |

## Schedule

| ID | WBS | Task | Type | Duration | Start | Finish | Predecessors | Resources | Work |
| --- | --- | --- | --- | --- | --- | --- | --- | --- | --- |
| 1 | 1 | Sistema Gerenciador de Jogos | manual | 30d | 2018-10-29 09:00 | 2018-12-03 18:00 |  |  | 112h |
| 2 | 2 | **Prospecção** |  | 24h | 2018-10-29 09:00 | 2018-10-31 18:00 |  |  | 6h |
| 3 | 2.1 | **PTEC** |  | 8h | 2018-10-29 09:00 | 2018-10-29 18:00 |  |  | 4h |
| 4 | 2.1.1 | Estudar domínio da Aplicação | manual | 1d | 2018-10-29 09:00 | 2018-10-29 18:00 |  | André; Felippe; Érick; José | 1h |
| 5 | 2.1.2 | Redigir PTEC | manual | 1d | 2018-10-29 09:00 | 2018-10-29 18:00 | 4 | André | 1h |
| 6 | 2.1.3 | Revisar PTEC | manual | 1d | 2018-10-29 09:00 | 2018-10-29 18:00 | 5 | Érick | 1h |
| 7 | 2.1.4 | Aprovar PTEC | manual | 1d | 2018-10-29 09:00 | 2018-10-29 18:00 | 6 | Érick | 1h |
| 8 | 2.2 | **Estimativa Prel. De Tamanho** |  | 2d | 2018-10-30 09:00 | 2018-10-31 18:00 |  |  | 2h |
| 9 | 2.2.1 | Estimar tamanho do Projeto | manual | 0.12d | 2018-10-30 09:00 | 2018-10-30 10:00 | 7 | Érick | 1h |
| 10 | 2.2.2 | Revisar Estimativa de Tamanho | manual | 0.12d | 2018-10-30 10:00 | 2018-10-30 11:00 | 9 | Felippe | 1h |
| 11 | 3 | **Análise** |  | 3d | 2018-10-31 09:00 | 2018-11-02 18:00 |  |  | 18h |
| 12 | 3.1 | **Documento de Requisitos** |  | 2d | 2018-10-31 09:00 | 2018-11-01 18:00 |  |  | 9h |
| 13 | 3.1.1 | Reunir-se com a equipe de desenvolvimento | manual | 0.12d | 2018-10-30 11:00 | 2018-10-30 12:00 | 10 | André; Érick; Felippe; José | 3h |
| 14 | 3.1.2 | Elaborar DRE | manual | 0.5d | 2018-10-31 09:00 | 2018-10-31 14:00 | 13 | André | 4h |
| 15 | 3.1.3 | Revisar DRE | manual | 0.12d | 2018-10-31 14:00 | 2018-10-31 15:00 | 14 | André | 2h |
| 16 | 3.2 | **Matriz de Rastreabilidade Bidirecional** |  | 2d | 2018-11-01 09:00 | 2018-11-02 18:00 |  |  | 9h |
| 17 | 3.2.1 | Elaborar MRB | manual | 0.62d | 2018-10-31 15:00 | 2018-11-01 11:00 | 15 | José | 5h |
| 18 | 3.2.2 | Revisar Requisitos para confirmar entrada na MRB | manual | 2h | 2018-11-01 11:00 | 2018-11-01 14:00 | 17 | José | 2h |
| 19 | 3.2.3 | Revisar MRB | manual | 0.25d | 2018-11-01 14:00 | 2018-11-01 16:00 | 18 | Érick | 2h |
| 20 | 4 | **Projeto** |  | 2d | 2018-11-03 09:00 | 2018-11-05 18:00 |  |  | 5h |
| 21 | 4.1 | Elaborar DC | manual | 1d | 2018-11-01 16:00 | 2018-11-02 16:00 | 19 | José | 1h |
| 22 | 4.2 | Revisar DC | manual | 1d | 2018-11-02 16:00 | 2018-11-03 16:00 | 21 | José | 1h |
| 23 | 4.3 | Atualizar MRB | manual | 0.12d | 2018-11-03 16:00 | 2018-11-03 17:00 | 22 | José | 1h |
| 24 | 4.4 | **Modelo Entidade Relacionamento** |  | 2d | 2018-11-04 09:00 | 2018-11-05 18:00 |  |  | 2h |
| 25 | 4.4.1 | Elaborar MER | manual | 0.25d | 2018-11-04 09:00 | 2018-11-04 11:00 | 23 | Felippe | 1h |
| 26 | 4.4.2 | Revisar MER | manual | 0.12d | 2018-11-05 09:00 | 2018-11-05 10:00 | 25 | Érick | 1h |

| ID | WBS | Task | Type | Duration | Start | Finish | Predecessors | Total slack | Free slack | Constraint | Resources | Work |
| --- | --- | --- | --- | --- | --- | --- | --- | --- | --- | --- | --- | --- |
| 27 | 5 | **Implementação ou Prototipagem** |  | 19d | 2018-11-08 09:00 | 2018-11-30 18:00 |  |  |  |  |  | 67h |
| 28 | 5.1 | Release 02 |  | 3d | 2018-11-08 09:00 | 2018-11-11 18:00 | 26 | 4d | 1d | start no earlier than 2018-11-08 09:00 |  | 15h |
| 29 | 5.2 | Release 03 |  | 5d | 2018-11-13 09:00 | 2018-11-18 18:00 | 28 | 3d | 1d | start no earlier than 2018-11-13 09:00 |  | 18h |
| 30 | 5.3 | Release 04 |  | 4d | 2018-11-20 09:00 | 2018-11-25 18:00 | 29 | 2d | 1d | finish no earlier than 2018-11-25 18:00 |  | 17h |
| 31 | 5.4 | Release 05 |  | 4d | 2018-11-27 09:00 | 2018-11-30 18:00 | 30 | 1d | 0d | finish no earlier than 2018-11-30 18:00 |  | 17h |
| 32 | 6 | **Fase de Fechamento** |  | 2d | 2018-12-01 09:00 | 2018-12-03 18:00 |  |  |  |  |  | 5h |
| 33 | 6.1 | Execução de Testes no Ambiente de Teste | manual | 2d | 2018-12-01 09:00 | 2018-12-02 18:00 | 31 |  |  |  | Programador 1; Programador 2 | 5h |
